# Projeto Institucional V1.0

How a schedule from MS Project changed from version to version. A marks actual dates.

## Version 1 (saved 2025-06-14, file Projeto-Institucional-V.1.0.0.mpp)

Note of the change: feat: anotações seção 1 e 2 - MsProject Rubens do Carmo

| ID | WBS | Task | Duration | Start | Finish | Total float |
| --- | --- | --- | --- | --- | --- | --- |
| 1 | 1 | **Início do Projeto** | 10d? | 2025-01-01 | 2025-01-15 | 0d |
| 2 |  | Etapa 1 - Criação | 1d? | 2025-01-01 | 2025-01-02 | 0d |
| 3 |  | Fazer Brainstorm de criação | 4h | 2025-01-01 | 2025-01-01 | 0d |
| 4 |  | Criar Roteiro | 10d | 2025-01-01 | 2025-01-15 | 0d |
| 5 |  | Criar Storyboard | 2d | 2025-01-01 | 2025-01-03 | 0d |
| 6 |  | Término Etapa 1 | 0d | 2025-01-01 | 2025-01-01 | 0d |
| 7 | 2 | **Etapa 2 - Planejamento** | 10d | 2025-01-01 | 2025-01-15 | 0d |
| 8 |  | Selecionar Casting | 5d | 2025-01-01 | 2025-01-08 | 0d |
| 9 |  | Selecionar Locações de Filmagem | 10d | 2025-01-01 | 2025-01-15 | 0d |
| 10 |  | Definir Equipamentos de Filmagem | 1d | 2025-01-01 | 2025-01-02 | 0d |
| 11 |  | Definir Equipe de Filmagem | 1d | 2025-01-01 | 2025-01-02 | 0d |
| 12 |  | Definir Equipamentos de Audio | 1d | 2025-01-01 | 2025-01-02 | 0d |
| 13 |  | Definir Equipe de Audio | 1d | 2025-01-01 | 2025-01-02 | 0d |
| 14 |  | Definir Equipamentos de Iluminação | 1d | 2025-01-01 | 2025-01-02 | 0d |
| 15 |  | Definir Equipe de Iluminação | 1d | 2025-01-01 | 2025-01-02 | 0d |
| 16 |  | Planejar Produção e Operação | 2.5d | 2025-01-01 | 2025-01-03 | 0d |
| 17 |  | Planejar Montagem de Cenários | 2d | 2025-01-01 | 2025-01-03 | 0d |
| 18 |  | Planejar Figurino | 1d | 2025-01-01 | 2025-01-02 | 0d |
| 19 |  | Planejar Deslocamento das Equipes | 0.5d | 2025-01-01 | 2025-01-01 | 0d |
| 20 |  | Definir Cronograma de Filmagens | 2d | 2025-01-01 | 2025-01-03 | 0d |
| 21 |  | Definir Cronograma de Edição | 2d | 2025-01-01 | 2025-01-03 | 0d |
| 22 |  | Criar Orçamento e Planejamento Financeiro | 2d | 2025-01-01 | 2025-01-03 | 0d |
| 23 |  | Término Etapa 2 | 0d | 2025-01-01 | 2025-01-01 | 0d |
| 24 | 3 | **Etapa 3 - Execução** | 2d | 2025-01-01 | 2025-01-03 | 0d |
| 25 |  | Contratar Serviços e Equipes | 2d | 2025-01-01 | 2025-01-03 | 0d |
| 26 |  | Realizar Ajustes do Local | 1d | 2025-01-01 | 2025-01-02 | 0d |
| 27 |  | Montar Cenário | 1d | 2025-01-01 | 2025-01-02 | 0d |
| 28 |  | Montar Equipamentos de Filmagem | 4h | 2025-01-01 | 2025-01-01 | 0d |
| 29 |  | Montar Equipamentos de Audio | 4h | 2025-01-01 | 2025-01-01 | 0d |
| 30 |  | Montar Equipamentos de Iluminação | 4h | 2025-01-01 | 2025-01-01 | 0d |
| 31 |  | Testar Equipamentos | 4h | 2025-01-01 | 2025-01-01 | 0d |
| 32 |  | Realizar Ensaios | 1d | 2025-01-01 | 2025-01-02 | 0d |
| 33 |  | Realizar Filmagens | 1d | 2025-01-01 | 2025-01-02 | 0d |
| 34 |  | Desmontar Local | 0.5d | 2025-01-01 | 2025-01-01 | 0d |
| 35 |  | Limpar Local | 0.5d | 2025-01-01 | 2025-01-01 | 0d |
| 36 |  | Término Etapa 3 | 0d | 2025-01-01 | 2025-01-01 | 0d |
| 37 | 4 | **Etapa 4 - Pós Produção** | 5d | 2025-01-01 | 2025-01-08 | 0d |
| 38 |  | Decupar Material | 1d | 2025-01-01 | 2025-01-02 | 0d |
| 39 |  | Editar Vídeo | 3d | 2025-01-01 | 2025-01-06 | 0d |
| 40 |  | Inserir Efeitos Especiais | 5d | 2025-01-01 | 2025-01-08 | 0d |
| 41 |  | Realizar Tratamento e Correções | 2d | 2025-01-01 | 2025-01-03 | 0d |
| 42 |  | Renderizar | 4h | 2025-01-01 | 2025-01-01 | 0d |
| 43 |  | Entrega do Vídeo | 0d | 2025-01-01 | 2025-01-01 | 0d |
| 44 |  | Término do Projeto | 0d | 2025-01-01 | 2025-01-01 | 0d |

## Version 2 (saved 2025-06-16, file Projeto-Institucional-V.1.0.0.mpp)

Note of the change: feat: anotações seção 3 - MsProject Rubens do Carmo

Last finish 2025-01-15 → 2025-03-13 (+57d).

Changed:

| ID | Task | Start | Finish | Duration | Total float | Predecessors | Other |
| --- | --- | --- | --- | --- | --- | --- | --- |
| 1 | Início do Projeto |  | 2025-01-15 → 2025-01-01 (-14d) | 10d? → 0d | 0d → none |  |  |
| 2 | **Etapa 1 - Criação** |  | 2025-01-02 → 2025-01-08 (+6d) | 1d? → 5.5d | 0d → -5.44d |  |  |
| 3 | Fazer Brainstorm de criação |  |  |  | 0d → -5.44d | none → 1 |  |
| 4 | Criar Roteiro |  | 2025-01-15 → 2025-01-06 (-9d) | 10d → 3d | 0d → -5.44d | none → 1, 3 |  |
| 5 | Criar Storyboard | 2025-01-01 → 2025-01-06 (+5d) | 2025-01-03 → 2025-01-08 (+5d) |  | 0d → -5.44d | none → 4 |  |
| 6 | Término Etapa 1 | 2025-01-01 → 2025-01-08 (+7d) | 2025-01-01 → 2025-01-08 (+7d) |  | 0d → -5.44d | none → 5 |  |
| 7 | **Etapa 2 - Planejamento** | 2025-01-01 → 2025-01-08 (+7d) | 2025-01-15 → 2025-01-22 (+7d) | 10d → 10.5d | 0d → -5.44d |  |  |
| 8 | Criar Orçamento e Planejamento Financeiro | 2025-01-01 → 2025-01-08 (+7d) | 2025-01-03 → 2025-01-10 (+7d) |  | 0d → -5.44d | none → 6 |  |
| 9 | Selecionar Casting | 2025-01-01 → 2025-01-10 (+9d) | 2025-01-08 → 2025-01-15 (+7d) | 5d → 3d | 0d → -5.44d | none → 8 |  |
| 10 | Selecionar Locações de Filmagem | 2025-01-01 → 2025-01-10 (+9d) | 2025-01-15 → 2025-01-14 (-1d) | 10d → 2d | 0d → -5.44d | none → 9SS |  |
| 11 | Definir Equipamentos de Filmagem | 2025-01-01 → 2025-01-14 (+13d) | 2025-01-02 → 2025-01-14 (+12d) | 1d → 4h | 0d → -5.44d | none → 10 |  |
| 12 | Definir Equipe de Filmagem | 2025-01-01 → 2025-01-14 (+13d) | 2025-01-02 → 2025-01-14 (+12d) | 1d → 4h | 0d → -5.44d | none → 11FF |  |
| 13 | Definir Equipamentos de Audio | 2025-01-01 → 2025-01-14 (+13d) | 2025-01-02 → 2025-01-15 (+13d) | 1d → 4h | 0d → -5.44d | none → 12 |  |
| 14 | Definir Equipe de Audio | 2025-01-01 → 2025-01-14 (+13d) | 2025-01-02 → 2025-01-15 (+13d) | 1d → 4h | 0d → -5.44d | none → 13FF |  |
| 15 | Definir Equipamentos de Iluminação | 2025-01-01 → 2025-01-15 (+14d) | 2025-01-02 → 2025-01-15 (+13d) | 1d → 4h | 0d → -5.44d | none → 14 |  |
| 16 | Definir Equipe de Iluminação | 2025-01-01 → 2025-01-15 (+14d) | 2025-01-02 → 2025-01-16 (+14d) | 1d → 4h | 0d → -5.44d | none → 15 |  |
| 17 | Planejar Produção e Operação | 2025-01-01 → 2025-01-16 (+15d) | 2025-01-03 → 2025-01-20 (+17d) |  | 0d → -5.44d | none → 16 |  |
| 18 | Planejar Montagem de Cenários | 2025-01-01 → 2025-01-16 (+15d) | 2025-01-03 → 2025-01-20 (+17d) |  | 0d → -4.94d | none → 16 |  |
| 19 | Planejar Figurino | 2025-01-01 → 2025-01-16 (+15d) | 2025-01-02 → 2025-01-20 (+18d) | 1d → 2d | 0d → -4.94d | none → 16 |  |
| 20 | Planejar Deslocamento das Equipes | 2025-01-01 → 2025-01-16 (+15d) | 2025-01-01 → 2025-01-16 (+15d) |  | 0d → -3.44d | none → 16 |  |
| 21 | Definir Cronograma de Filmagens | 2025-01-01 → 2025-01-20 (+19d) | 2025-01-03 → 2025-01-22 (+19d) |  | 0d → -5.44d | none → 20, 18, 19, 17 |  |
| 22 | Definir Cronograma de Edição | 2025-01-01 → 2025-01-20 (+19d) | 2025-01-03 → 2025-01-22 (+19d) |  | 0d → -5.44d | none → 21SS |  |
| 23 | Término Etapa 2 | 2025-01-01 → 2025-01-22 (+21d) | 2025-01-01 → 2025-01-22 (+21d) |  | 0d → -5.44d | none → 22 |  |
| 24 | **Etapa 3 - Execução** | 2025-01-01 → 2025-01-22 (+21d) | 2025-01-03 → 2025-02-24 (+52d) | 2d → 19.97d | 0d → -5.44d |  |  |
| 25 | Contratar Serviços e Equipes | 2025-01-01 → 2025-01-22 (+21d) | 2025-01-03 → 2025-02-03 (+31d) | 2d → 8d | 0d → -5.44d | none → 23 |  |
| 26 | Realizar Ajustes do Local | 2025-01-01 → 2025-01-22 (+21d) | 2025-01-02 → 2025-01-27 (+25d) | 1d → 3d | 0d → 0.69d | none → 25SS |  |
| 27 | Montar Cenário | 2025-01-01 → 2025-01-27 (+26d) | 2025-01-02 → 2025-01-29 (+27d) | 1d → 2d | 0d → 0.69d | none → 26 |  |
| 28 | Montar Equipamentos de Filmagem | 2025-01-01 → 2025-01-29 (+28d) | 2025-01-01 → 2025-01-29 (+28d) |  | 0d → 0.69d | none → 27 |  |
| 29 | Montar Equipamentos de Audio | 2025-01-01 → 2025-01-29 (+28d) | 2025-01-01 → 2025-01-29 (+28d) |  | 0d → 0.69d | none → 27 |  |
| 30 | Montar Equipamentos de Iluminação | 2025-01-01 → 2025-01-29 (+28d) | 2025-01-01 → 2025-01-29 (+28d) |  | 0d → 0.69d | none → 27 |  |
| 31 | Testar Equipamentos | 2025-01-01 → 2025-01-29 (+28d) | 2025-01-01 → 2025-01-30 (+29d) |  | 0d → 0.69d | none → 28, 29, 30 |  |
| 32 | Realizar Ensaios | 2025-01-01 → 2025-01-31 (+30d) | 2025-01-02 → 2025-02-04 (+33d) | 1d → 3d |  | none → 31 | constraint none → must start on 2025-01-31 |
| 33 | Realizar Filmagens | 2025-01-01 → 2025-02-06 (+36d) | 2025-01-02 → 2025-02-21 (+50d) | 1d → 8d |  |  | constraint none → must start on 2025-02-06 |
| 34 | Desmontar Local | 2025-01-01 → 2025-02-21 (+51d) | 2025-01-01 → 2025-02-24 (+54d) | 0.5d → 1d |  | none → 33 |  |
| 35 | Limpar Local | 2025-01-01 → 2025-02-24 (+54d) | 2025-01-01 → 2025-02-24 (+54d) |  |  | none → 34 |  |
| 36 | Término Etapa 3 | 2025-01-01 → 2025-02-24 (+54d) | 2025-01-01 → 2025-02-24 (+54d) |  |  | none → 35 |  |
| 37 | **Etapa 4 - Pós Produção** | 2025-01-01 → 2025-02-24 (+54d) | 2025-01-08 → 2025-03-13 (+64d) | 5d → 13.5d |  |  |  |
| 38 | Decupar Material | 2025-01-01 → 2025-02-24 (+54d) | 2025-01-02 → 2025-02-25 (+54d) |  |  | none → 36 |  |
| 39 | Editar Vídeo | 2025-01-01 → 2025-02-25 (+55d) | 2025-01-06 → 2025-03-04 (+57d) | 3d → 5d |  | none → 38 |  |
| 40 | Inserir Efeitos Especiais | 2025-01-01 → 2025-03-04 (+62d) | 2025-01-08 → 2025-03-11 (+62d) |  |  | none → 39 |  |
| 41 | Realizar Tratamento e Correções | 2025-01-01 → 2025-03-11 (+69d) | 2025-01-03 → 2025-03-13 (+69d) |  |  | none → 40 |  |
| 42 | Renderizar | 2025-01-01 → 2025-03-13 (+71d) | 2025-01-01 → 2025-03-13 (+71d) |  |  | none → 41 |  |
| 43 | Entrega do Vídeo | 2025-01-01 → 2025-03-13 (+71d) | 2025-01-01 → 2025-03-13 (+71d) |  |  | none → 42 |  |
| 44 | Término do Projeto | 2025-01-01 → 2025-03-13 (+71d) | 2025-01-01 → 2025-03-13 (+71d) |  |  | none → 43 |  |

## Version 3 (saved 2025-06-18, file Projeto-Institucional-V.1.0.0.mpp)

Note of the change: feat: anotações seção 4 - MsProject Rubens do Carmo

Last finish stays 2025-03-13.

Changed:

| ID | Task | Start | Finish | Duration | Total float | Predecessors | Other |
| --- | --- | --- | --- | --- | --- | --- | --- |
| 2 | **Etapa 1 - Criação** |  | 2025-01-08 → 2025-01-09 (+1d) | 5.5d → 6.5d | -5.44d → 0d |  |  |
| 3 | Fazer Brainstorm de criação |  |  |  | -5.44d → 0d |  | resources none → Diretor [12.5%]; Igor Oliveira; Produtor; Roteirista |
| 4 | Criar Roteiro |  |  |  | -5.44d → 0d |  | resources none → Roteirista; Diretor [12.5%] |
| 5 | Criar Storyboard |  |  |  | -5.44d → 0d |  | resources none → Designer; Desenhista [50%] |
| 6 | Término Etapa 1 | 2025-01-08 → 2025-01-09 (+1d) | 2025-01-08 → 2025-01-09 (+1d) |  | -5.44d → 0d | 5 → 5FS+1d |  |
| 7 | **Etapa 2 - Planejamento** | 2025-01-08 → 2025-01-09 (+1d) | 2025-01-22 → 2025-01-29 (+7d) | 10.5d → 14.5d | -5.44d → 0d |  |  |
| 8 | Criar Orçamento e Planejamento Financeiro | 2025-01-08 → 2025-01-09 (+1d) | 2025-01-10 → 2025-01-13 (+3d) |  | -5.44d → 0d |  | resources none → Diretor; Roteirista |
| 9 | Selecionar Casting | 2025-01-10 → 2025-01-13 (+3d) | 2025-01-15 → 2025-01-17 (+2d) | 3d → 4d | -5.44d → 0d |  | resources none → Diretor [30%]; Produtor |
| 10 | Selecionar Locações de Filmagem | 2025-01-10 → 2025-01-13 (+3d) | 2025-01-14 → 2025-01-15 (+1d) |  | -5.44d → 0d |  | resources none → Produtor; Roteirista; Cenografista |
| 11 | Definir Equipamentos de Filmagem | 2025-01-14 → 2025-01-15 (+1d) | 2025-01-14 → 2025-01-15 (+1d) |  | -5.44d → 0d |  | resources none → Técnico de Filmagem; Produtor |
| 12 | Definir equipe de Filmagem | 2025-01-14 → 2025-01-15 (+1d) | 2025-01-14 → 2025-01-16 (+2d) | 4h → 8h | -5.44d → 0d | 11FF → 11 | was named Definir Equipe de Filmagem; resources none → Diretor [50%]; Produtor; Roteirista; Figurinista |
| 13 | Definir Equipamentos de Iluminação |  |  |  | -5.44d → 0.5d | 16 → 10 | resources none → Técnico de Iluminação; Produtor |
| 14 | Definir Equipe de Iluminação |  |  |  | -5.44d → 0.5d |  | resources none → Técnico de Iluminação; Produtor; Diretor; Maquiador; Diretor de Fotografia |
| 15 | Definir Equipamentos de Audio | 2025-01-14 → 2025-01-15 (+1d) |  |  | -5.44d → 0.5d | 12 → 10 | resources none → Técnico de Áudio; Produtor |
| 16 | Definir Equipe de Audio | 2025-01-14 → 2025-01-15 (+1d) | 2025-01-15 → 2025-01-16 (+1d) |  | -5.44d → 0.5d | 15FF → 15 |  |
| 17 | Planejar Produção e Operação |  | 2025-01-20 → 2025-01-22 (+2d) | 2.5d → 4d | -5.44d → 0d | 14 → 11, 13, 15, 12, 14, 16 | constraint none → start no earlier than 2025-01-16; resources none → Diretor [30%]; Produtor; Roteirista; Igor Oliveira; Diretor de Fotografia; Editor |
| 18 | Planejar Montagem de Cenários | 2025-01-16 → 2025-01-22 (+6d) | 2025-01-20 → 2025-01-24 (+4d) |  | -4.94d → 0d | 14 → 17 | resources none → Técnico de Áudio; Técnico de Filmagem; Técnico de Iluminação [50%]; Roteirista; Diretor de Fotografia |
| 19 | Planejar Figurino | 2025-01-16 → 2025-01-22 (+6d) | 2025-01-20 → 2025-01-24 (+4d) |  | -4.94d → 0d | 14 → 17 | resources none → Figurinista; Roteirista |
| 20 | Planejar Deslocamento das Equipes |  | 2025-01-16 → 2025-01-17 (+1d) |  | -3.44d → 0d | 14 → 12, 14, 16 | resources none → Produtor |
| 21 | Definir Cronograma de Filmagens | 2025-01-20 → 2025-01-24 (+4d) | 2025-01-22 → 2025-01-29 (+7d) | 2d → 3d | -5.44d → 0d | 20, 18, 19, 17 → 17, 18, 19 | resources none → Roteirista [50%]; Técnico de Filmagem [50%] |
| 22 | Definir Cronograma de Edição | 2025-01-20 → 2025-01-24 (+4d) | 2025-01-22 → 2025-01-28 (+6d) |  | -5.44d → 0d | 21SS → 17, 18, 19 | resources none → Editor; Produtor |
| 23 | Término Etapa 2 | 2025-01-22 → 2025-01-29 (+7d) | 2025-01-22 → 2025-01-29 (+7d) |  | -5.44d → 0d | 22 → 21 |  |
| 24 | **Etapa 3 - Execução** | 2025-01-22 → 2025-01-17 (-5d) |  | 19.97d → 23.47d | -5.44d → 0d |  |  |
| 25 | Contratar Serviços e Equipes | 2025-01-22 → 2025-01-17 (-5d) | 2025-02-03 → 2025-01-21 (-13d) | 8d → 2d | -5.44d → 5.22d | 23 → 9 | resources none → Produtor |
| 26 | Realizar Ajustes do Local | 2025-01-22 → 2025-01-21 (-1d) | 2025-01-27 → 2025-01-22 (-5d) | 3d → 1d | 0.69d → 5.22d | 25SS → 25 | resources none → Técnico de Áudio; Técnico de Iluminação [50%]; Técnico de Filmagem; Operador de Som |
| 27 | Montar Cenário | 2025-01-27 → 2025-01-22 (-5d) | 2025-01-29 → 2025-01-23 (-6d) |  | 0.69d → 5.22d |  | resources none → Projeto Cenografia [0.1%]; Gerador [1 unid.]; Iluminador; Técnico de Áudio; Técnico de Filmagem; Técnico de Iluminação [50%]; Câmeras [5 unid.] |
| 28 | Montar Equipamentos de Filmagem | 2025-01-29 → 2025-01-23 (-6d) | 2025-01-29 → 2025-01-23 (-6d) |  | 0.69d → 5.22d | 27 → 27FF | resources none → Câmeras [5 unid.]; Cabos [120 m.]; Técnico de Filmagem |
| 29 | Montar Equipamentos de Audio | 2025-01-29 → 2025-01-23 (-6d) | 2025-01-29 → 2025-01-23 (-6d) |  | 0.69d → 5.22d | 27 → 27FF | resources none → Cabos [100 m.]; Microfones [4 unid.]; Mesa de Som [1 unid.]; Técnico de Áudio |
| 30 | Montar Equipamentos de Iluminação | 2025-01-29 → 2025-01-23 (-6d) | 2025-01-29 → 2025-01-23 (-6d) |  | 0.69d → 5.22d | 27 → 27FF | resources none → Mesa de Luz [1 unid.]; Spots de Luz [12 unid.]; Cabos [125 m.]; Técnico de Iluminação [200%] |
| 31 | Testar Equipamentos | 2025-01-29 → 2025-01-23 (-6d) | 2025-01-30 → 2025-01-24 (-6d) | 4h → 6h | 0.69d → 5.22d |  | resources none → Técnico de Áudio; Técnico de Iluminação |
| 32 | Realizar Ensaios | 2025-01-31 → 2025-01-24 (-7d) | 2025-02-04 → 2025-01-29 (-6d) |  | 0d → 5.22d |  | constraint must start on 2025-01-31 → none; resources none → Artista 1 [50%]; Artista 2 [50%]; Artista 3 [50%]; Artista 4 [50%]; Roteirista [50%]; Cameraman [500%]; Produtor |
| 33 | Realizar Filmagens |  |  |  |  | none → 32 | resources none → Diretor; Produtor; Roteirista; Artista 1; Artista 2; Artista 3; Artista 4; Cameraman [500%]; Câmeras [5 unid.]; Cenografista |
| 34 | Desmontar Local |  |  |  |  |  | resources none → Técnico de Áudio; Técnico de Filmagem; Técnico de Iluminação |
| 35 | Limpar Local |  |  |  |  |  | resources none → Serviço de Limpeza [0.1%] |
| 37 | **Etapa 4 - Pós Produção** |  |  |  |  | none → 24 |  |
| 38 | Decupar Material |  |  |  |  | 36 → none | resources none → Técnico de Áudio; Técnico de Filmagem; Técnico de Iluminação; Operador de Som; Cameraman |
| 39 | Editar Vídeo |  |  |  |  |  | resources none → Diretor; Editor; Produtor |
| 40 | Inserir Efeitos Especiais |  |  |  |  |  | resources none → Animador (Efeitos Especiais); Produtor |
| 41 | Realizar Tratamento e Correções |  |  |  |  |  | resources none → Diretor de Fotografia |

## Version 4 (data date 2025-01-03, saved 2025-06-22, file Projeto-Institucional-V.1.0.0.mpp)

Note of the change: feat: anotações seção 5 - MsProject Rubens do Carmo

Last finish stays 2025-03-13.

Changed:

| ID | Task | Start | Finish | Duration | Total float | Other |
| --- | --- | --- | --- | --- | --- | --- |
| 1 | Início do Projeto | 2025-01-01 → 2025-01-01 07:30 | 2025-01-01 → 2025-01-01 07:30 |  |  |  |
| 2 | **Etapa 1 - Criação** | 2025-01-01 → 2025-01-01 07:30 | 2025-01-09 → 2025-01-09 10:00 |  |  |  |
| 3 | Fazer Brainstorm de criação | 2025-01-01 → 2025-01-01 07:30 | 2025-01-01 → 2025-01-01 11:30 |  |  |  |
| 4 | Criar Roteiro | 2025-01-01 → 2025-01-01 12:30 | 2025-01-06 → 2025-01-06 10:45 |  |  |  |
| 5 | Criar Storyboard | 2025-01-06 → 2025-01-06 10:45 | 2025-01-08 → 2025-01-08 10:15 |  |  |  |
| 6 | Término Etapa 1 | 2025-01-09 → 2025-01-09 10:00 | 2025-01-09 → 2025-01-09 10:00 |  |  |  |
| 7 | **Etapa 2 - Planejamento** | 2025-01-09 → 2025-01-09 10:00 | 2025-01-29 → 2025-01-28 15:45 (-1d) | 14.5d → 14d |  |  |
| 8 | Criar Orçamento e Planejamento Financeiro | 2025-01-09 → 2025-01-09 10:00 | 2025-01-13 → 2025-01-13 09:30 |  |  |  |
| 9 | Selecionar Casting | 2025-01-13 → 2025-01-13 09:30 | 2025-01-17 → 2025-01-16 08:45 (-1d) | 4d → 3d |  | resources Diretor [30%]; Produtor → Diretor [20%]; Produtor |
| 10 | Selecionar Locações de Filmagem | 2025-01-13 → 2025-01-13 09:30 | 2025-01-15 → 2025-01-14 16:45 (-1d) | 2d → 1.81d | 0d → none | constraint none → finish no earlier than 2025-01-14 16:45 |
| 11 | Definir Equipamentos de Filmagem | 2025-01-15 → 2025-01-15 07:30 | 2025-01-15 → 2025-01-15 11:30 |  |  |  |
| 12 | Definir equipe de Filmagem | 2025-01-15 → 2025-01-15 12:30 | 2025-01-16 → 2025-01-15 16:30 (-1d) | 8h → 4h |  | resources Diretor [50%]; Produtor; Roteirista; Figurinista → Diretor [20%]; Produtor; Roteirista; Figurinista |
| 13 | Definir Equipamentos de Iluminação | 2025-01-15 → 2025-01-15 07:30 | 2025-01-15 → 2025-01-15 11:30 |  | 0.5d → 0d |  |
| 14 | Definir Equipe de Iluminação | 2025-01-15 → 2025-01-15 12:30 | 2025-01-16 → 2025-01-15 16:30 (-1d) |  | 0.5d → 0d | resources Técnico de Iluminação; Produtor; Diretor; Maquiador; Diretor de Fotografia → Técnico de Iluminação; Produtor; Diretor [50%]; Maquiador; Diretor de Fotografia |
| 15 | Definir Equipamentos de Audio | 2025-01-15 → 2025-01-15 07:30 | 2025-01-15 → 2025-01-15 11:30 |  | 0.5d → 0d |  |
| 16 | Definir Equipe de Audio | 2025-01-15 → 2025-01-15 12:30 | 2025-01-16 → 2025-01-15 16:30 (-1d) |  | 0.5d → 0d | resources none → Técnico de Áudio; Diretor [20%] |
| 17 | Planejar Produção e Operação | 2025-01-16 → 2025-01-16 08:45 | 2025-01-22 → 2025-01-22 07:45 |  |  | constraint start no earlier than 2025-01-16 → start no earlier than 2025-01-16 08:45 |
| 18 | Planejar Montagem de Cenários | 2025-01-22 → 2025-01-22 07:45 | 2025-01-24 → 2025-01-23 16:30 (-1d) |  |  | resources Técnico de Áudio; Técnico de Filmagem; Técnico de Iluminação [50%]; Roteirista; Diretor de Fotografia → Técnico de Áudio; Técnico de Filmagem; Técnico de Iluminação [50%]; Roteirista [50%]; Diretor de Fotografia |
| 19 | Planejar Figurino | 2025-01-22 → 2025-01-22 07:45 | 2025-01-24 → 2025-01-23 16:30 (-1d) |  |  |  |
| 20 | Planejar Deslocamento das Equipes | 2025-01-16 → 2025-01-15 16:30 (-1d) | 2025-01-17 → 2025-01-16 11:15 (-1d) |  |  |  |
| 21 | Definir Cronograma de Filmagens | 2025-01-24 → 2025-01-23 16:30 (-1d) | 2025-01-29 → 2025-01-28 15:45 (-1d) |  |  |  |
| 22 | Definir Cronograma de Edição | 2025-01-24 → 2025-01-23 16:30 (-1d) | 2025-01-28 → 2025-01-27 16:00 (-1d) |  |  |  |
| 23 | Término Etapa 2 | 2025-01-29 → 2025-01-28 15:45 (-1d) | 2025-01-29 → 2025-01-28 15:45 (-1d) |  |  |  |
| 24 | **Etapa 3 - Execução** | 2025-01-17 → 2025-01-16 08:45 (-1d) | 2025-02-24 → 2025-02-24 13:45 | 23.47d → 24.47d |  |  |
| 25 | Contratar Serviços e Equipes | 2025-01-17 → 2025-01-16 08:45 (-1d) | 2025-01-21 → 2025-01-20 08:15 (-1d) |  | 5.22d → 6.22d |  |
| 26 | Realizar Ajustes do Local | 2025-01-21 → 2025-01-20 08:15 (-1d) | 2025-01-22 → 2025-01-21 08:00 (-1d) |  | 5.22d → 6.22d |  |
| 27 | Montar Cenário | 2025-01-22 → 2025-01-21 08:00 (-1d) | 2025-01-23 → 2025-01-22 16:45 (-1d) |  | 5.22d → 6.22d | resources Projeto Cenografia [0.1%]; Gerador [1 unid.]; Iluminador; Técnico de Áudio; Técnico de Filmagem; Técnico de Iluminação [50%]; Câmeras [5 unid.] → Projeto Cenografia [0.1%]; Gerador [1 unid.]; Iluminador; Técnico de Áudio [200%]; Técnico de Filmagem [200%]; Técnico de Iluminação [50%]; Câmeras [5 unid.] |
| 28 | Montar Queipamentos de Filmagem | 2025-01-23 → 2025-01-22 12:45 (-1d) | 2025-01-23 → 2025-01-22 16:45 (-1d) |  | 5.22d → 6.22d | was named Montar Equipamentos de Filmagem |
| 29 | Montar Equipamentos de Audio | 2025-01-23 → 2025-01-22 12:45 (-1d) | 2025-01-23 → 2025-01-22 16:45 (-1d) |  | 5.22d → 6.22d |  |
| 30 | Montar Equipamentos de Iluminação | 2025-01-23 → 2025-01-22 12:45 (-1d) | 2025-01-23 → 2025-01-22 16:45 (-1d) |  | 5.22d → 6.22d | resources Mesa de Luz [1 unid.]; Spots de Luz [12 unid.]; Cabos [125 m.]; Técnico de Iluminação [200%] → Mesa de Luz [1 unid.]; Spots de Luz [12 unid.]; Cabos [125 m.]; Técnico de Iluminação |
| 31 | Testar Equipamentos | 2025-01-23 → 2025-01-23 07:30 | 2025-01-24 → 2025-01-23 14:30 (-1d) |  | 5.22d → 6.22d |  |
| 32 | Realizar Ensaios | 2025-01-24 → 2025-01-23 14:30 (-1d) | 2025-01-29 → 2025-01-28 13:45 (-1d) |  | 5.22d → 6.22d |  |
| 33 | Realizar Filmagens | 2025-02-06 → 2025-02-06 07:30 | 2025-02-21 → 2025-02-21 09:00 |  |  | constraint must start on 2025-02-06 → must start on 2025-02-06 07:30 |
| 34 | Desmontar Local | 2025-02-21 → 2025-02-21 09:00 | 2025-02-24 → 2025-02-24 08:45 |  |  |  |
| 35 | Limpar Local | 2025-02-24 → 2025-02-24 08:45 | 2025-02-24 → 2025-02-24 13:45 |  |  |  |
| 36 | Término Etapa 3 | 2025-02-24 → 2025-02-24 13:45 | 2025-02-24 → 2025-02-24 13:45 |  |  |  |
| 37 | **Etapa 4 - Pós Produção** | 2025-02-24 → 2025-02-24 13:45 | 2025-03-13 → 2025-03-13 14:30 |  |  |  |
| 38 | Decupar Material | 2025-02-24 → 2025-02-24 13:45 | 2025-02-25 → 2025-02-25 13:30 |  |  |  |
| 39 | Editar Vídeo | 2025-02-25 → 2025-02-25 13:30 | 2025-03-04 → 2025-03-04 11:15 |  |  |  |
| 40 | Inserir Efeitos Especiais | 2025-03-04 → 2025-03-04 11:15 | 2025-03-11 → 2025-03-11 10:00 |  |  |  |
| 41 | Realizar Tratamento e Correções | 2025-03-11 → 2025-03-11 10:00 | 2025-03-13 → 2025-03-13 09:30 |  |  |  |
| 42 | Renderizar | 2025-03-13 → 2025-03-13 09:30 | 2025-03-13 → 2025-03-13 14:30 |  |  |  |
| 43 | Entrega do Vídeo | 2025-03-13 → 2025-03-13 14:30 | 2025-03-13 → 2025-03-13 14:30 |  |  |  |
| 44 | Término do Projeto | 2025-03-13 → 2025-03-13 14:30 | 2025-03-13 → 2025-03-13 14:30 |  |  |  |

## Version 5 (data date 2025-01-10, saved 2025-06-25, file Projeto-Institucional-V.1.0.0.mpp)

Note of the change: feat: anotações seção 6 - MsProject Rubens do Carmo

Last finish stays 2025-03-13. Complete tasks 0 → 3.

Changed:

| ID | Task | Start | Finish | Duration | Complete | Total float | Predecessors | Other |
| --- | --- | --- | --- | --- | --- | --- | --- | --- |
| 1 | Início do Projeto | 2025-01-01 07:30 → 2025-01-01 A | 2025-01-01 07:30 → 2025-01-01 A |  | 0% → 100% |  |  | baseline start none → 2025-01-01; baseline finish none → 2025-01-01 |
| 2 | **Etapa 1 - Criação** | 2025-01-01 07:30 → 2025-01-01 A | 2025-01-09 10:00 → 2025-01-07 (-2d) | 6.5d → 5.12d | 0% → 90% | 0d → 1.38d |  | baseline start none → 2025-01-01; baseline finish none → 2025-01-07 |
| 3 | Fazer Brainstorm de criação | 2025-01-01 07:30 → 2025-01-01 | 2025-01-01 11:30 → 2025-01-01 |  |  |  |  | resources Diretor [12.5%]; Igor Oliveira; Produtor; Roteirista → Diretor; Igor Oliveira; Produtor; Roteirista; baseline start none → 2025-01-01; baseline finish none → 2025-01-01 |
| 4 | Criar Roteiro | 2025-01-01 12:30 → 2025-01-01 A | 2025-01-06 10:45 → 2025-01-03 A (-3d) | 3d → 2.5d | 0% → 100% | 0d → none |  | constraint none → finish no earlier than 2025-01-03; resources Roteirista; Diretor [12.5%] → Roteirista; Diretor; baseline start none → 2025-01-01; baseline finish none → 2025-01-03 |
| 5 | Criar Storyboard | 2025-01-06 10:45 → 2025-01-06 A | 2025-01-08 10:15 → 2025-01-07 A (-1d) |  | 0% → 100% | 0d → none |  | constraint none → finish no earlier than 2025-01-07; baseline start none → 2025-01-06; baseline finish none → 2025-01-07 |
| 6 | Término Etapa 1 | 2025-01-09 10:00 → 2025-01-07 (-2d) | 2025-01-09 10:00 → 2025-01-07 (-2d) |  |  | 0d → 1.38d | 5FS+1d → 5 | constraint none → finish no earlier than 2025-01-07; baseline start none → 2025-01-07; baseline finish none → 2025-01-07 |
| 7 | **Etapa 2 - Planejamento** | 2025-01-09 10:00 → 2025-01-07 (-2d) | 2025-01-28 15:45 → 2025-01-28 | 14d → 15.38d |  |  |  | baseline start none → 2025-01-07; baseline finish none → 2025-01-28 |
| 8 | Criar Orçamento e Planejamento Financeiro | 2025-01-09 10:00 → 2025-01-07 (-2d) | 2025-01-13 09:30 → 2025-01-09 (-4d) |  |  | 0d → 1.38d |  | baseline start none → 2025-01-07; baseline finish none → 2025-01-09 |
| 9 | Selecionar Casting | 2025-01-13 09:30 → 2025-01-09 (-4d) | 2025-01-16 08:45 → 2025-01-14 (-2d) |  |  | 0d → 1.38d |  | baseline start none → 2025-01-09; baseline finish none → 2025-01-14 |
| 10 | Selecionar Locações de Filmagem | 2025-01-13 09:30 → 2025-01-13 | 2025-01-14 16:45 → 2025-01-14 |  |  |  |  | constraint finish no earlier than 2025-01-14 16:45 → finish no earlier than 2025-01-14; baseline start none → 2025-01-13; baseline finish none → 2025-01-14 |
| 11 | Definir Equipamentos de Filmagem | 2025-01-15 07:30 → 2025-01-15 | 2025-01-15 11:30 → 2025-01-15 |  |  |  |  | baseline start none → 2025-01-15; baseline finish none → 2025-01-15 |
| 12 | Definir equipe de Filmagem | 2025-01-15 12:30 → 2025-01-15 | 2025-01-15 16:30 → 2025-01-15 |  |  |  |  | baseline start none → 2025-01-15; baseline finish none → 2025-01-15 |
| 13 | Definir Equipamentos de Iluminação | 2025-01-15 07:30 → 2025-01-15 | 2025-01-15 11:30 → 2025-01-15 |  |  |  |  | baseline start none → 2025-01-15; baseline finish none → 2025-01-15 |
| 14 | Definir Equipe de Iluminação | 2025-01-15 12:30 → 2025-01-15 | 2025-01-15 16:30 → 2025-01-15 |  |  |  |  | baseline start none → 2025-01-15; baseline finish none → 2025-01-15 |
| 15 | Definir Equipamentos de Audio | 2025-01-15 07:30 → 2025-01-15 | 2025-01-15 11:30 → 2025-01-15 |  |  |  |  | baseline start none → 2025-01-15; baseline finish none → 2025-01-15 |
| 16 | Definir Equipe de Audio | 2025-01-15 12:30 → 2025-01-15 | 2025-01-15 16:30 → 2025-01-15 |  |  |  |  | baseline start none → 2025-01-15; baseline finish none → 2025-01-15 |
| 17 | Planejar Produção e Operação | 2025-01-16 08:45 → 2025-01-16 | 2025-01-22 07:45 → 2025-01-22 |  |  |  |  | constraint start no earlier than 2025-01-16 08:45 → start no earlier than 2025-01-16; baseline start none → 2025-01-16; baseline finish none → 2025-01-22 |
| 18 | Planejar Montagem de Cenários | 2025-01-22 07:45 → 2025-01-22 | 2025-01-23 16:30 → 2025-01-23 |  |  |  |  | baseline start none → 2025-01-22; baseline finish none → 2025-01-23 |
| 19 | Planejar Figurino | 2025-01-22 07:45 → 2025-01-22 | 2025-01-23 16:30 → 2025-01-23 |  |  |  |  | baseline start none → 2025-01-22; baseline finish none → 2025-01-23 |
| 20 | Planejar Deslocamento das Equipes | 2025-01-15 16:30 → 2025-01-15 | 2025-01-16 11:15 → 2025-01-16 |  |  |  |  | baseline start none → 2025-01-15; baseline finish none → 2025-01-16 |
| 21 | Definir Cronograma de Filmagens | 2025-01-23 16:30 → 2025-01-23 | 2025-01-28 15:45 → 2025-01-28 |  |  |  |  | baseline start none → 2025-01-23; baseline finish none → 2025-01-28 |
| 22 | Definir Cronograma de Edição | 2025-01-23 16:30 → 2025-01-23 | 2025-01-27 16:00 → 2025-01-27 |  |  |  |  | baseline start none → 2025-01-23; baseline finish none → 2025-01-27 |
| 23 | Término Etapa 2 | 2025-01-28 15:45 → 2025-01-28 | 2025-01-28 15:45 → 2025-01-28 |  |  |  |  | baseline start none → 2025-01-28; baseline finish none → 2025-01-28 |
| 24 | **Etapa 3 - Execução** | 2025-01-16 08:45 → 2025-01-14 (-2d) | 2025-02-24 13:45 → 2025-02-24 | 24.47d → 25.84d |  |  |  | baseline start none → 2025-01-14; baseline finish none → 2025-02-24 |
| 25 | Contratar Serviços e Equipes | 2025-01-16 08:45 → 2025-01-14 (-2d) | 2025-01-20 08:15 → 2025-01-16 (-4d) |  |  | 6.22d → 7.59d |  | baseline start none → 2025-01-14; baseline finish none → 2025-01-16 |
| 26 | Realizar Ajustes do Local | 2025-01-20 08:15 → 2025-01-16 (-4d) | 2025-01-21 08:00 → 2025-01-17 (-4d) |  |  | 6.22d → 7.59d |  | baseline start none → 2025-01-16; baseline finish none → 2025-01-17 |
| 27 | Montar Cenário | 2025-01-21 08:00 → 2025-01-17 (-4d) | 2025-01-22 16:45 → 2025-01-21 (-1d) |  |  | 6.22d → 7.59d |  | baseline start none → 2025-01-17; baseline finish none → 2025-01-21 |
| 28 | Montar Queipamentos de Filmagem | 2025-01-22 12:45 → 2025-01-22 | 2025-01-22 16:45 → 2025-01-22 |  |  | 6.22d → 6.25d |  | constraint none → finish no earlier than 2025-01-22; baseline start none → 2025-01-22; baseline finish none → 2025-01-22 |
| 29 | Montar Equipamentos de Audio | 2025-01-22 12:45 → 2025-01-21 (-1d) | 2025-01-22 16:45 → 2025-01-21 (-1d) |  |  | 6.22d → 7.59d |  | baseline start none → 2025-01-21; baseline finish none → 2025-01-21 |
| 30 | Montar Equipamentos de Iluminação | 2025-01-22 12:45 → 2025-01-21 (-1d) | 2025-01-22 16:45 → 2025-01-21 (-1d) |  |  | 6.22d → 7.59d |  | baseline start none → 2025-01-21; baseline finish none → 2025-01-21 |
| 31 | Testar Equipamentos | 2025-01-23 07:30 → 2025-01-22 (-1d) | 2025-01-23 14:30 → 2025-01-23 |  |  | 6.22d → 6.25d |  | baseline start none → 2025-01-22; baseline finish none → 2025-01-23 |
| 32 | Realizar Ensaios | 2025-01-23 14:30 → 2025-01-23 | 2025-01-28 13:45 → 2025-01-28 |  |  | 6.22d → 6.25d |  | baseline start none → 2025-01-23; baseline finish none → 2025-01-28 |
| 33 | Realizar Filmagens | 2025-02-06 07:30 → 2025-02-06 | 2025-02-21 09:00 → 2025-02-21 |  |  |  |  | constraint must start on 2025-02-06 07:30 → must start on 2025-02-06; baseline start none → 2025-02-06; baseline finish none → 2025-02-21 |
| 34 | Desmontar Local | 2025-02-21 09:00 → 2025-02-21 | 2025-02-24 08:45 → 2025-02-24 |  |  |  |  | baseline start none → 2025-02-21; baseline finish none → 2025-02-24 |
| 35 | Limpar Local | 2025-02-24 08:45 → 2025-02-24 | 2025-02-24 13:45 → 2025-02-24 |  |  |  |  | baseline start none → 2025-02-24; baseline finish none → 2025-02-24 |
| 36 | Término Etapa 3 | 2025-02-24 13:45 → 2025-02-24 | 2025-02-24 13:45 → 2025-02-24 |  |  |  |  | baseline start none → 2025-02-24; baseline finish none → 2025-02-24 |
| 37 | **Etapa 4 - Pós Produção** | 2025-02-24 13:45 → 2025-02-24 | 2025-03-13 14:30 → 2025-03-13 |  |  |  |  | baseline start none → 2025-02-24; baseline finish none → 2025-03-13 |
| 38 | Decupar Material | 2025-02-24 13:45 → 2025-02-24 | 2025-02-25 13:30 → 2025-02-25 |  |  |  |  | baseline start none → 2025-02-24; baseline finish none → 2025-02-25 |
| 39 | Editar Vídeo | 2025-02-25 13:30 → 2025-02-25 | 2025-03-04 11:15 → 2025-03-04 |  |  |  |  | baseline start none → 2025-02-25; baseline finish none → 2025-03-04 |
| 40 | Inserir Efeitos Especiais | 2025-03-04 11:15 → 2025-03-04 | 2025-03-11 10:00 → 2025-03-11 |  |  |  |  | baseline start none → 2025-03-04; baseline finish none → 2025-03-11 |
| 41 | Realizar Tratamento e Correções | 2025-03-11 10:00 → 2025-03-11 | 2025-03-13 09:30 → 2025-03-13 |  |  |  |  | baseline start none → 2025-03-11; baseline finish none → 2025-03-13 |
| 42 | Renderizar | 2025-03-13 09:30 → 2025-03-13 | 2025-03-13 14:30 → 2025-03-13 |  |  |  |  | baseline start none → 2025-03-13; baseline finish none → 2025-03-13 |
| 43 | Entrega do Vídeo | 2025-03-13 14:30 → 2025-03-13 | 2025-03-13 14:30 → 2025-03-13 |  |  |  |  | baseline start none → 2025-03-13; baseline finish none → 2025-03-13 |
| 44 | Término do Projeto | 2025-03-13 14:30 → 2025-03-13 | 2025-03-13 14:30 → 2025-03-13 |  |  |  |  | baseline start none → 2025-03-13; baseline finish none → 2025-03-13 |

## Version 6 (data date 2025-01-17, saved 2025-06-26, file Projeto-Institucional-V.1.0.0.mpp)

Note of the change: feat: anotações seção 6 - MsProject Rubens do Carmo

Last finish stays 2025-03-13. Complete tasks 3 → 5.

Changed:

| ID | Task | Start | Finish | Duration | Complete | Total float |
| --- | --- | --- | --- | --- | --- | --- |
| 7 | **Etapa 2 - Planejamento** | 2025-01-07 A |  |  | 0% → 25% |  |
| 8 | Criar Orçamento e Planejamento Financeiro | 2025-01-07 A | 2025-01-09 → 2025-01-10 A (+1d) | 2d → 3d | 0% → 100% | 1.38d → none |
| 9 | Selecionar Casting | 2025-01-09 A | 2025-01-14 A |  | 0% → 100% | 1.38d → none |

## Version 7 (saved 2025-06-26, file Projeto-Institucional-V.4.0.0.mpp)

Note of the change: feat: anotações seção 6 - MsProject Rubens do Carmo

Last finish 2025-03-13 → 2024-03-19 (-359d). Complete tasks 5 → 0.

Added:

| ID | Task | Duration | Start | Finish | Predecessors | Constraint | Resources |
| --- | --- | --- | --- | --- | --- | --- | --- |
| 11 | Definir Equipe de Filmagem | 1d | 2024-02-07 | 2024-02-08 | 10 |  | Técnico de Filmagem; Produtor |
| 25 | Contratações dos Serviços e Equipes | 2d | 2024-02-21 | 2024-02-22 | 22 |  | Produtor Executivo (usuário) [50%]; Produtor [200%] |
| 26 | Realizar Ajustes no Local | 1d | 2024-02-26 | 2024-02-26 | 25, 20 | as late as possible | Diretor; Diretor de Fotografia; Cenografista; Produtor [300%] |
| 28 | Montar Equipamentos de Filmagem | 4h | 2024-02-28 | 2024-02-28 | 27 |  | Técnico de Filmagem; Cameraman [500%]; Câmeras [5 unid.]; Cabos [120 m.]; Produtor |
| 43 | Entrega | 0d | 2024-03-19 | 2024-03-19 | 42 |  |  |

Removed: 12 Definir equipe de Filmagem; 25 Contratar Serviços e Equipes; 26 Realizar Ajustes do Local; 28 Montar Queipamentos de Filmagem; 43 Entrega do Vídeo

Changed:

| ID | Task | Start | Finish | Duration | Complete | Total float | Predecessors | Other |
| --- | --- | --- | --- | --- | --- | --- | --- | --- |
| 1 | Início do Projeto | 2025-01-01 A → 2024-01-01 (-366d) | 2025-01-01 A → 2024-01-01 (-366d) |  | 100% → 0% | none → 0d |  | baseline start 2025-01-01 → none; baseline finish 2025-01-01 → none |
| 2 | **Etapa 1 - Criação** | 2025-01-01 A → 2024-01-01 (-366d) | 2025-01-07 → 2024-01-19 (-354d) | 5.12d → 13d | 90% → 0% |  | none → 1 | baseline start 2025-01-01 → none; baseline finish 2025-01-07 → none |
| 3 | Fazer Brainstorm de criação | 2025-01-01 → 2024-01-01 (-366d) | 2025-01-01 → 2024-01-01 (-366d) |  |  |  | 1 → none | resources Diretor; Igor Oliveira; Produtor; Roteirista → Diretor; Diretor de Fotografia; Editor; Figurinista; Produtor Executivo (usuário); Roteirista; Produtor; baseline start 2025-01-01 → none; baseline finish 2025-01-01 → none |
| 4 | Criar Roteiro | 2025-01-01 A → 2024-01-02 (-365d) | 2025-01-03 A → 2024-01-17 (-352d) | 2.5d → 10d | 100% → 0% | none → 0d | 1, 3 → 3FS+4h | constraint finish no earlier than 2025-01-03 → none; baseline start 2025-01-01 → none; baseline finish 2025-01-03 → none |
| 5 | Criar Storyboard | 2025-01-06 A → 2024-01-18 (-354d) | 2025-01-07 A → 2024-01-19 (-354d) |  | 100% → 0% | none → 0d |  | constraint finish no earlier than 2025-01-07 → none; resources Designer; Desenhista [50%] → Desenhista; Designer; baseline start 2025-01-06 → none; baseline finish 2025-01-07 → none |
| 6 | Término Etapa 1 | 2025-01-07 → 2024-01-19 (-354d) | 2025-01-07 → 2024-01-19 (-354d) |  |  | 0d → 36.5d | 5 → 2 | constraint finish no earlier than 2025-01-07 → none; baseline start 2025-01-07 → none; baseline finish 2025-01-07 → none |
| 7 | **Etapa 2 - Planejamento** | 2025-01-07 A → 2024-01-22 (-351d) | 2025-01-28 → 2024-02-23 (-340d) | 15.38d → 20d | 25% → 0% |  |  | baseline start 2025-01-07 → none; baseline finish 2025-01-28 → none |
| 8 | Selecionar Casting | 2025-01-09 A → 2024-01-22 (-353d) | 2025-01-14 A → 2024-01-26 (-354d) | 3d → 5d | 100% → 0% | none → 0d | 22 → 5 | resources Diretor [20%]; Produtor → Diretor [25%]; Produtor [300%]; baseline start 2025-01-09 → none; baseline finish 2025-01-14 → none |
| 9 | Selecionar Locações de Filmagem | 2025-01-13 → 2024-01-22 (-357d) | 2025-01-14 → 2024-02-02 (-347d) | 1.81d → 10d |  | none → 0d |  | constraint finish no earlier than 2025-01-14 → none; resources Produtor; Roteirista; Cenografista → Diretor [25%]; Diretor de Fotografia [50%]; Produtor Executivo (usuário) [25%]; Produtor [200%]; baseline start 2025-01-13 → none; baseline finish 2025-01-14 → none |
| 10 | Definir Equipamentos de Filmagem | 2025-01-15 → 2024-02-05 (-345d) | 2025-01-15 → 2024-02-06 (-344d) | 4h → 1d |  | 0d → 0.5d |  | baseline start 2025-01-15 → none; baseline finish 2025-01-15 → none |
| 12 | Definir Equipamentos de Audio | 2025-01-15 → 2024-02-05 (-345d) | 2025-01-15 → 2024-02-06 (-344d) | 4h → 1d |  | 0d → 0.5d |  | baseline start 2025-01-15 → none; baseline finish 2025-01-15 → none |
| 13 | Definir Equipe de Audio | 2025-01-15 → 2024-02-07 (-343d) | 2025-01-15 → 2024-02-08 (-342d) | 4h → 1d |  | 0d → 0.5d |  | resources Técnico de Áudio; Diretor [20%] → Técnico de Áudio; Produtor; baseline start 2025-01-15 → none; baseline finish 2025-01-15 → none |
| 14 | Definir Equipamentos de Iluminação | 2025-01-15 → 2024-02-05 (-345d) | 2025-01-15 → 2024-02-06 (-344d) | 4h → 1d |  |  |  | resources Técnico de Iluminação; Produtor → Diretor de Fotografia; Técnico de Iluminação; Produtor; baseline start 2025-01-15 → none; baseline finish 2025-01-15 → none |
| 15 | Definir Equipe de Iluminação | 2025-01-15 → 2024-02-07 (-343d) | 2025-01-15 → 2024-02-08 (-342d) | 4h → 1d |  |  |  | resources Técnico de Iluminação; Produtor; Diretor [50%]; Maquiador; Diretor de Fotografia → Diretor de Fotografia; Técnico de Iluminação; Produtor; baseline start 2025-01-15 → none; baseline finish 2025-01-15 → none |
| 16 | Planejar Produção e Operação | 2025-01-16 → 2024-02-14 (-337d) | 2025-01-22 → 2024-02-16 (-341d) | 4d → 2.5d |  |  | 10, 14, 12, Definir equipe de Filmagem, 15, 13 → 10, 11, 12, 13, 14, 15FS+4h | constraint start no earlier than 2025-01-16 → none; resources Diretor [30%]; Produtor; Roteirista; Igor Oliveira; Diretor de Fotografia; Editor → Produtor Executivo (usuário) [50%]; Produtor [300%]; baseline start 2025-01-16 → none; baseline finish 2025-01-22 → none |
| 17 | Planejar Montagem de Cenários | 2025-01-22 → 2024-02-15 (-342d) | 2025-01-23 → 2024-02-16 (-342d) |  |  | 0d → 21.5d | 16 → 16FS-2d | resources Técnico de Áudio; Técnico de Filmagem; Técnico de Iluminação [50%]; Roteirista [50%]; Diretor de Fotografia → Cenografista; Produtor Executivo (usuário) [25%]; Produtor [200%]; baseline start 2025-01-22 → none; baseline finish 2025-01-23 → none |
| 18 | Planejar Figurino | 2025-01-22 → 2024-02-19 (-338d) | 2025-01-23 → 2024-02-19 (-339d) | 2d → 1d |  | 0d → 20.5d |  | resources Figurinista; Roteirista → Figurinista; Produtor [300%]; baseline start 2025-01-22 → none; baseline finish 2025-01-23 → none |
| 19 | Planejar Deslocamento das Equipes | 2025-01-15 → 2024-02-09 (-341d) | 2025-01-16 → 2024-02-09 (-342d) |  |  | 0d → 24d | Definir equipe de Filmagem, 15, 13 → 11, 13, 15 | resources Produtor → Produtor [200%]; baseline start 2025-01-15 → none; baseline finish 2025-01-16 → none |
| 20 | Definir Cronograma de Filmagens | 2025-01-23 → 2024-02-21 (-337d) | 2025-01-28 → 2024-02-23 (-340d) |  |  |  | 16, 17, 18 → 16FS+2d | resources Roteirista [50%]; Técnico de Filmagem [50%] → Diretor de Fotografia; Produtor Executivo (usuário) [50%]; Diretor; baseline start 2025-01-23 → none; baseline finish 2025-01-28 → none |
| 21 | Definir Cronograma de Edição | 2025-01-23 → 2024-02-21 (-337d) | 2025-01-27 → 2024-02-22 (-340d) |  |  | 0d → 17.5d | 16, 17, 18 → 20SS | resources Editor; Produtor → Editor; Diretor; baseline start 2025-01-23 → none; baseline finish 2025-01-27 → none |
| 22 | Criar Orçamento e Planejamento Financeiro | 2025-01-07 A → 2024-02-19 (-323d) | 2025-01-10 A → 2024-02-20 (-325d) | 3d → 2d | 100% → 0% | none → 1d | 6 → 16 | resources Diretor; Roteirista → Produtor Executivo (usuário); baseline start 2025-01-07 → none; baseline finish 2025-01-09 → none |
| 23 | Término Etapa 2 | 2025-01-28 → 2024-02-23 (-340d) | 2025-01-28 → 2024-02-23 (-340d) |  |  | 0d → 16.5d | 20 → 7 | baseline start 2025-01-28 → none; baseline finish 2025-01-28 → none |
| 24 | **Etapa 3 - Execução** | 2025-01-14 → 2024-02-21 (-328d) | 2025-02-24 → 2024-03-01 (-360d) | 25.84d → 8d |  | 0d → 1d |  | baseline start 2025-01-14 → none; baseline finish 2025-02-24 → none |
| 27 | Montar Cenário | 2025-01-17 → 2024-02-26 (-326d) | 2025-01-21 → 2024-02-27 (-329d) | 2d → 1d |  | 7.59d → 0d | Realizar Ajustes do Local → 26 | resources Projeto Cenografia [0.1%]; Gerador [1 unid.]; Iluminador; Técnico de Áudio [200%]; Técnico de Filmagem [200%]; Técnico de Iluminação [50%]; Câmeras [5 unid.] → Cenografista; Projeto Cenografia; baseline start 2025-01-17 → none; baseline finish 2025-01-21 → none |
| 29 | Montar Equipamentos de Audio | 2025-01-21 → 2024-02-28 (-328d) | 2025-01-21 → 2024-02-28 (-328d) |  |  | 7.59d → 0d | 27FF → 27 | resources Cabos [100 m.]; Microfones [4 unid.]; Mesa de Som [1 unid.]; Técnico de Áudio → Técnico de Áudio; Operador de Som [300%]; Microfones [4 unid.]; Mesa de Som [1 unid.]; Cabos [100 m.]; Produtor; baseline start 2025-01-21 → none; baseline finish 2025-01-21 → none |
| 30 | Montar Equipamentos de Iluminação | 2025-01-21 → 2024-02-28 (-328d) | 2025-01-21 → 2024-02-28 (-328d) |  |  | 7.59d → 0d | 27FF → 27 | resources Mesa de Luz [1 unid.]; Spots de Luz [12 unid.]; Cabos [125 m.]; Técnico de Iluminação → Técnico de Iluminação; Spots de Luz [12 unid.]; Iluminador [200%]; Mesa de Luz [1 unid.]; Cabos [250 m.]; Produtor; baseline start 2025-01-21 → none; baseline finish 2025-01-21 → none |
| 31 | Testar Equipamentos | 2025-01-22 → 2024-02-28 (-329d) | 2025-01-23 → 2024-02-28 (-330d) | 6h → 4h |  | 6.25d → 0d | 30, Montar Queipamentos de Filmagem, 29 → 28, 29, 30 | resources Técnico de Áudio; Técnico de Iluminação → Técnico de Áudio; Técnico de Filmagem; Técnico de Iluminação; Operador de Som [300%]; Iluminador [200%]; Cameraman [500%]; baseline start 2025-01-22 → none; baseline finish 2025-01-23 → none |
| 32 | Realizar Ensaios | 2025-01-23 → 2024-02-29 (-329d) | 2025-01-28 → 2024-02-29 (-334d) | 3d → 1d |  | 6.25d → 0d |  | constraint none → must start on 2024-02-29; resources Artista 1 [50%]; Artista 2 [50%]; Artista 3 [50%]; Artista 4 [50%]; Roteirista [50%]; Cameraman [500%]; Produtor → Diretor; Iluminador [200%]; Cameraman [500%]; Operador de Som [300%]; Diretor de Fotografia; Artista 1 [50%]; Artista 2 [50%]; Artista 3 [50%]; Artista 4 [50%]; Microfones [4 unid.]; Gerador [1 unid.]; Câmeras [5 unid.]; Roteirista; Cabos [470 m.]; Mesa de Luz [1 unid.]; Mesa de Som [1 unid.]; Spots de Luz [12 unid.]; Técnico de Áudio; Técnico de Filmagem; Técnico de Iluminação; Produtor [500%]; baseline start 2025-01-23 → none; baseline finish 2025-01-28 → none |
| 33 | Realizar Filmagens | 2025-02-06 → 2024-03-01 (-342d) | 2025-02-21 → 2024-03-01 (-357d) | 8d → 1d |  |  |  | constraint must start on 2025-02-06 → must start on 2024-03-01; resources Diretor; Produtor; Roteirista; Artista 1; Artista 2; Artista 3; Artista 4; Cameraman [500%]; Câmeras [5 unid.]; Cenografista → Roteirista; Artista 1; Artista 2; Artista 3; Artista 4; Cameraman [500%]; Diretor; Diretor de Fotografia; Iluminador [200%]; Operador de Som [300%]; Cabos [470 m.]; Câmeras [5 unid.]; Gerador [1 unid.]; Mesa de Luz [1 unid.]; Mesa de Som [1 unid.]; Microfones [4 unid.]; Spots de Luz [12 unid.]; Técnico de Áudio; Técnico de Filmagem; Técnico de Iluminação; Produtor [500%]; baseline start 2025-02-06 → none; baseline finish 2025-02-21 → none |
| 34 | Desmontar Local | 2025-02-21 → 2024-03-01 (-357d) | 2025-02-24 → 2024-03-01 (-360d) | 1d → 0.5d |  | 0d → 26d |  | resources Técnico de Áudio; Técnico de Filmagem; Técnico de Iluminação → Cenografista; Técnico de Áudio; Técnico de Filmagem; Cameraman [500%]; Iluminador [200%]; Operador de Som [300%]; Técnico de Iluminação; Produtor [500%]; baseline start 2025-02-21 → none; baseline finish 2025-02-24 → none |
| 35 | Limpar Local | 2025-02-24 → 2024-03-01 (-360d) | 2025-02-24 → 2024-03-01 (-360d) |  |  | 0d → 26d | 34 → 33 | resources Serviço de Limpeza [0.1%] → Serviço de Limpeza; baseline start 2025-02-24 → none; baseline finish 2025-02-24 → none |
| 36 | Término Etapa 3 | 2025-02-24 → 2024-03-01 (-360d) | 2025-02-24 → 2024-03-01 (-360d) |  |  | 0d → 11.5d | 35 → 24 | baseline start 2025-02-24 → none; baseline finish 2025-02-24 → none |
| 37 | **Etapa 4 - Pós Produção** | 2025-02-24 → 2024-03-04 (-357d) | 2025-03-13 → 2024-03-19 (-359d) | 13.5d → 11.5d |  |  | 24 → none | baseline start 2025-02-24 → none; baseline finish 2025-03-13 → none |
| 38 | Decupar Material | 2025-02-24 → 2024-03-04 (-357d) | 2025-02-25 → 2024-03-04 (-358d) |  |  |  | none → 33 | resources Técnico de Áudio; Técnico de Filmagem; Técnico de Iluminação; Operador de Som; Cameraman → Editor; baseline start 2025-02-24 → none; baseline finish 2025-02-25 → none |
| 39 | Editar Vídeo | 2025-02-25 → 2024-03-05 (-357d) | 2025-03-04 → 2024-03-07 (-362d) | 5d → 3d |  |  |  | resources Diretor; Editor; Produtor → Editor; Diretor [25%]; baseline start 2025-02-25 → none; baseline finish 2025-03-04 → none |
| 40 | Inserir Efeitos Especiais | 2025-03-04 → 2024-03-08 (-361d) | 2025-03-11 → 2024-03-14 (-362d) |  |  |  |  | resources Animador (Efeitos Especiais); Produtor → Animador (Efeitos Especiais); Editor; baseline start 2025-03-04 → none; baseline finish 2025-03-11 → none |
| 41 | Realizar Tratamento e Correções | 2025-03-11 → 2024-03-15 (-361d) | 2025-03-13 → 2024-03-18 (-360d) |  |  |  |  | resources Diretor de Fotografia → Editor; Designer; baseline start 2025-03-11 → none; baseline finish 2025-03-13 → none |
| 42 | Renderizar | 2025-03-13 → 2024-03-19 (-359d) | 2025-03-13 → 2024-03-19 (-359d) |  |  |  |  | baseline start 2025-03-13 → none; baseline finish 2025-03-13 → none |
| 44 | Término do Projeto | 2025-03-13 → 2024-03-19 (-359d) | 2025-03-13 → 2024-03-19 (-359d) |  |  |  | Entrega do Vídeo → 37 | baseline start 2025-03-13 → none; baseline finish 2025-03-13 → none |
